# lab_2_3

How a schedule from MS Project changed from version to version. A marks actual dates.

## Version 1 (data date 2026-03-02, saved 2026-04-14, file lab_5_3.mpp)

Note of the change: start lab 6

| ID | WBS | Task | Duration | Start | Finish | Predecessors | Total float |
| --- | --- | --- | --- | --- | --- | --- | --- |
| 1 |  | Начало проекта | 0d | 2026-03-02 | 2026-03-02 |  | 71d |
| 2 | 2 | **Анализ и проектирование** | 25d | 2026-03-02 | 2026-04-07 |  | 0d |
| 3 | 2.1 | **Разработка дизайна интерфейса** | 25d | 2026-03-02 | 2026-04-07 | 1 | 71d |
| 4 |  | Разработка 2D графических элементов | 3w | 2026-03-02 | 2026-03-24 |  | 71d |
| 5 |  | Разработка 3D графических элементов | 2w | 2026-03-02 | 2026-03-17 | 4SS | 71d |
| 6 |  | Создание заставки | 3w | 2026-03-17 | 2026-04-07 | 5 | 71d |
| 7 |  | Анализ и построение структуры базы объектов | 2w | 2026-03-24 | 2026-04-07 |  | 39d |
| 8 |  | Анализ и проектирование ядра | 3w | 2026-03-02 | 2026-03-24 |  | 0d |
| 9 | 3 | **Разработка** | 115d | 2026-03-24 | 2026-09-04 |  | 0d |
| 10 | 3.1 | **Построение базы объектов** | 75d | 2026-04-07 | 2026-07-24 | 7 | 39d |
| 11 |  | Программирование средств обработки базы объектов | 3w | 2026-04-07 | 2026-04-28 | 7 | 39d |
| 12 |  | Наполнение базы объектов | 12w | 2026-04-28 | 2026-07-24 | 11 | 39d |
| 13 | 3.2 | **Создание ядра GIS** | 81d | 2026-03-24 | 2026-07-20 | 8 | 0d |
| 14 |  | Создание модели ядра | 5w | 2026-03-24 | 2026-04-28 | 8 | 0d |
| 15 |  | Тестирование модели ядра | 1w | 2026-04-28 | 2026-05-06 | 14 | 0d |
| 16 |  | Создание рабочей версии ядра | 10w | 2026-05-07 | 2026-07-20 | 15 | 0d |
| 17 |  | Программирование интерфейса | 3w | 2026-07-20 | 2026-08-10 | 3, 13 | 0d |
| 18 |  | Создание мультимедиа – наполнения | 6w | 2026-04-07 | 2026-05-21 | 3 | 84d |
| 19 |  | Создание справочной системы | 2w | 2026-08-21 | 2026-09-04 | 17 | 9d |
| 20 | 3.6 | **Создание руководства пользователя** | 17d | 2026-07-27 | 2026-08-19 | 17FS-10d | 0d |
| 21 |  | Написание руководства пользователя | 3w | 2026-07-29 | 2026-08-19 | 22SS+2d | 0d |
| 22 |  | Разработка дизайна руководства | 1w | 2026-07-27 | 2026-08-03 |  | 0d |
| 23 | 3.7 | **Создание web – сайта и поддержка** | 21d | 2026-07-29 | 2026-08-27 |  | 0d |
| 24 |  | Разработка структуры сайта | 1d | 2026-07-29 | 2026-07-30 | 21SS | 0d |
| 25 |  | Разработка дизайна сайта | 1w | 2026-07-30 | 2026-08-06 | 24 | 0d |
| 26 |  | Наполнение сайта | 3w | 2026-08-06 | 2026-08-27 | 25 | 0d |
| 27 | 4 | **Тестирование** | 20d | 2026-08-20 | 2026-09-17 |  | 0d |
| 28 |  | Тестирование сайта | 4w | 2026-08-20 | 2026-09-17 | 23FS-1w | 0d |
| 29 |  | Сдача сайта в эксплуатацию | 0d | 2026-09-17 | 2026-09-17 | 28 | 0d |

## Version 2 (data date 2026-05-12, saved 2026-04-14, file lab_5_1.mpp)

Note of the change: start lab 6

Last finish 2026-09-17 → 2026-09-01 (-16d). Complete tasks 0 → 18.

Added:

| ID | Task | Duration | Start | Finish | Predecessors | Constraint | Resources |
| --- | --- | --- | --- | --- | --- | --- | --- |
| 2 | **Создание интерфейса** | 102.32d | 2026-03-02 09:00 A | 2026-07-28 12:33 | 1 |  |  |
| 31 | Совещание 3 | 1h | 2026-03-18 09:00 A | 2026-03-18 10:00 A |  | start no earlier than 2026-03-18 09:00 | 3D аниматор; Web-дизайнер; Ведущий программист; Мультимедиа-корреспондент; Системный аналитик; Технический писатель; Художник-дизайнер |
| 32 | Совещание 4 | 1h | 2026-03-25 09:00 A | 2026-03-25 10:00 A |  | start no earlier than 2026-03-25 09:00 | 3D аниматор; Web-дизайнер; Ведущий программист; Мультимедиа-корреспондент; Системный аналитик; Технический писатель; Художник-дизайнер |
| 33 | Совещание 5 | 1h | 2026-04-01 09:00 A | 2026-04-01 10:00 A |  | start no earlier than 2026-04-01 09:00 | 3D аниматор; Web-дизайнер; Ведущий программист; Мультимедиа-корреспондент; Системный аналитик; Технический писатель; Художник-дизайнер |
| 34 | Совещание 6 | 1h | 2026-04-08 09:00 A | 2026-04-08 10:00 A |  | start no earlier than 2026-04-08 09:00 | 3D аниматор; Web-дизайнер; Ведущий программист; Мультимедиа-корреспондент; Системный аналитик; Технический писатель; Художник-дизайнер |
| 35 | Совещание 7 | 1h | 2026-04-15 09:00 A | 2026-04-15 10:00 A |  | start no earlier than 2026-04-15 09:00 | 3D аниматор; Web-дизайнер; Ведущий программист; Мультимедиа-корреспондент; Системный аналитик; Технический писатель; Художник-дизайнер |
| 36 | Совещание 8 | 1h | 2026-04-22 09:00 A | 2026-04-22 10:00 A |  | start no earlier than 2026-04-22 09:00 | 3D аниматор; Web-дизайнер; Ведущий программист; Мультимедиа-корреспондент; Системный аналитик; Технический писатель; Художник-дизайнер |
| 37 | Совещание 9 | 1h | 2026-04-29 09:00 A | 2026-04-29 10:00 A |  | start no earlier than 2026-04-29 09:00 | 3D аниматор; Web-дизайнер; Ведущий программист; Мультимедиа-корреспондент; Системный аналитик; Технический писатель; Художник-дизайнер |
| 38 | Совещание 10 | 1h | 2026-05-06 09:00 A | 2026-05-06 10:00 A |  | start no earlier than 2026-05-06 09:00 | 3D аниматор; Web-дизайнер; Ведущий программист; Мультимедиа-корреспондент; Системный аналитик; Технический писатель; Художник-дизайнер |
| 39 | Совещание 11 | 1h | 2026-05-13 09:00 | 2026-05-13 10:00 |  | start no earlier than 2026-05-13 09:00 | 3D аниматор; Web-дизайнер; Ведущий программист; Мультимедиа-корреспондент; Системный аналитик; Технический писатель; Художник-дизайнер |
| 40 | Совещание 12 | 1h | 2026-05-20 09:00 | 2026-05-20 10:00 |  | start no earlier than 2026-05-20 09:00 | 3D аниматор; Web-дизайнер; Ведущий программист; Мультимедиа-корреспондент; Системный аналитик; Технический писатель; Художник-дизайнер |
| 41 | Совещание 13 | 1h | 2026-05-27 09:00 | 2026-05-27 10:00 |  | start no earlier than 2026-05-27 09:00 | 3D аниматор; Web-дизайнер; Ведущий программист; Мультимедиа-корреспондент; Системный аналитик; Технический писатель; Художник-дизайнер |
| 42 | Совещание 14 | 1h | 2026-06-03 09:00 | 2026-06-03 10:00 |  | start no earlier than 2026-06-03 09:00 | 3D аниматор; Web-дизайнер; Ведущий программист; Мультимедиа-корреспондент; Системный аналитик; Технический писатель; Художник-дизайнер |
| 43 | Совещание 15 | 1h | 2026-06-10 09:00 | 2026-06-10 10:00 |  | start no earlier than 2026-06-10 09:00 | 3D аниматор; Web-дизайнер; Ведущий программист; Мультимедиа-корреспондент; Системный аналитик; Технический писатель; Художник-дизайнер |
| 44 | Совещание 16 | 1h | 2026-06-17 09:00 | 2026-06-17 10:00 |  | start no earlier than 2026-06-17 09:00 | 3D аниматор; Web-дизайнер; Ведущий программист; Мультимедиа-корреспондент; Системный аналитик; Технический писатель; Художник-дизайнер |
| 45 | Совещание 17 | 1h | 2026-06-24 09:00 | 2026-06-24 10:00 |  | start no earlier than 2026-06-24 09:00 | 3D аниматор; Web-дизайнер; Ведущий программист; Мультимедиа-корреспондент; Системный аналитик; Технический писатель; Художник-дизайнер |
| 46 | Совещание 18 | 1h | 2026-07-01 09:00 | 2026-07-01 10:00 |  | start no earlier than 2026-07-01 09:00 | 3D аниматор; Web-дизайнер; Ведущий программист; Мультимедиа-корреспондент; Системный аналитик; Технический писатель; Художник-дизайнер |
| 47 | Совещание 19 | 1h | 2026-07-08 09:00 | 2026-07-08 10:00 |  | start no earlier than 2026-07-08 09:00 | 3D аниматор; Web-дизайнер; Ведущий программист; Мультимедиа-корреспондент; Системный аналитик; Технический писатель; Художник-дизайнер |
| 48 | Совещание 20 | 1h | 2026-07-15 09:00 | 2026-07-15 10:00 |  | start no earlier than 2026-07-15 09:00 | 3D аниматор; Web-дизайнер; Ведущий программист; Мультимедиа-корреспондент; Системный аналитик; Технический писатель; Художник-дизайнер |
| 49 | Совещание 21 | 1h | 2026-07-22 09:00 | 2026-07-22 10:00 |  | start no earlier than 2026-07-22 09:00 | 3D аниматор; Web-дизайнер; Ведущий программист; Мультимедиа-корреспондент; Системный аналитик; Технический писатель; Художник-дизайнер |
| 50 | Совещание 22 | 1h | 2026-07-29 09:00 | 2026-07-29 10:00 |  | start no earlier than 2026-07-29 09:00 | 3D аниматор; Web-дизайнер; Ведущий программист; Мультимедиа-корреспондент; Системный аналитик; Технический писатель; Художник-дизайнер |

Changed:

| ID | Task | Start | Finish | Duration | Complete | Total float | Predecessors | Other |
| --- | --- | --- | --- | --- | --- | --- | --- | --- |
| 1 | Начало проекта | 2026-03-02 → 2026-03-02 09:00 A | 2026-03-02 → 2026-03-02 09:00 A |  | 0% → 100% | 71d → none |  | baseline start none → 2026-03-02 09:00; baseline finish none → 2026-03-02 09:00 |
| 3 | **Разработка дизайна интерфейса** | 2026-03-02 → 2026-03-02 09:00 A | 2026-04-07 → 2026-04-07 16:00 A | 25d → 25.62d | 0% → 100% | 71d → none | 1 → none | baseline start none → 2026-03-02 09:00; baseline finish none → 2026-04-07 16:00 |
| 4 | Разработка 2D графических элементов | 2026-03-02 → 2026-03-02 09:00 A | 2026-03-24 → 2026-03-24 13:00 A |  | 0% → 100% | 71d → none |  | baseline start none → 2026-03-02 09:00; baseline finish none → 2026-03-24 13:00 |
| 5 | Разработка 3D графических элементов | 2026-03-02 → 2026-03-02 09:00 A | 2026-03-17 → 2026-03-17 12:00 A |  | 0% → 100% | 71d → none |  | baseline start none → 2026-03-02 09:00; baseline finish none → 2026-03-17 12:00 |
| 6 | Создание заставки | 2026-03-17 → 2026-03-17 12:00 A | 2026-04-07 → 2026-04-07 16:00 A |  | 0% → 100% | 71d → none |  | baseline start none → 2026-03-17 12:00; baseline finish none → 2026-04-07 16:00 |
| 7 | Программирование интерфейса | 2026-07-20 → 2026-07-16 17:33 (-4d) | 2026-08-10 → 2026-07-28 12:33 (-13d) | 3w → 1.5w |  |  |  | resources Программист#3; Прогаммист#4 → Программист#3; Прогаммист#4; Программист#1; Программист#2; baseline start none → 2026-06-15 10:33; baseline finish none → 2026-06-24 15:33 |
| 8 | **Построение базы объектов** | 2026-04-07 → 2026-04-11 09:00 A (+4d) | 2026-07-24 → 2026-08-28 16:13 (+35d) | 75d → 96.78d | 0% → 25% | 39d → 1.85d | 9 → none | baseline start none → 2026-03-24 14:00; baseline finish none → 2026-07-24 16:00 |
| 9 | Анализ и построение структуры базы объектов | 2026-03-24 → 2026-04-11 09:00 A (+18d) | 2026-04-07 → 2026-04-27 13:00 A (+20d) |  | 0% → 100% | 39d → none |  | baseline start none → 2026-03-24 14:00; baseline finish none → 2026-04-07 16:00 |
| 10 | Программирование средств обработки базы объектов | 2026-04-07 → 2026-04-27 14:00 A (+20d) | 2026-04-28 → 2026-06-19 16:13 (+52d) | 3w → 3.92w | 0% → 49% | 39d → 1.85d |  | resources Программист#3; Прогаммист#4 → Программист#3; Прогаммист#4; Программист#1; Программист#2; baseline start none → 2026-04-07 16:00; baseline finish none → 2026-04-28 16:00 |
| 11 | Наполнение базы объектов | 2026-04-28 → 2026-06-19 16:13 (+52d) | 2026-07-24 → 2026-08-28 16:13 (+35d) | 12w → 10w |  | 39d → 1.85d |  | resources Наборщик данных#1; Наборщик данных#2; Наборщик данных#3; Наборщик данных#4; Наборщик данных#5 → Наборщик данных#1; Наборщик данных#2; Наборщик данных#3; Наборщик данных#4; Наборщик данных#5; Наборщик данных#6; baseline start none → 2026-04-28 16:00; baseline finish none → 2026-07-24 16:00 |
| 12 | **Создание ядра GIS** | 2026-03-24 → 2026-03-02 09:00 A (-22d) | 2026-07-20 → 2026-07-16 17:33 (-4d) | 81d → 94.82d | 0% → 48% |  | 13 → none | baseline start none → 2026-03-02 09:00; baseline finish none → 2026-06-15 10:33 |
| 13 | Анализ и проектирование ядра | 2026-03-02 → 2026-03-02 09:00 A | 2026-03-24 → 2026-03-27 15:00 A (+3d) | 3w → 3.5w | 0% → 100% | 0d → none |  | baseline start none → 2026-03-02 09:00; baseline finish none → 2026-03-24 13:00 |
| 14 | Создание модели ядра | 2026-03-24 → 2026-03-24 14:00 A | 2026-04-28 → 2026-04-21 14:49 A (-7d) | 5w → 2.34w | 0% → 100% | 0d → none |  | resources Ведущий программист; Программист#1 → Ведущий программист; Программист#1; Прогаммист#4; Программист#3; Программист#2; baseline start none → 2026-03-24 14:00; baseline finish none → 2026-04-07 14:49 |
| 15 | Тестирование модели ядра | 2026-04-28 → 2026-04-21 14:49 A (-7d) | 2026-05-06 → 2026-04-28 14:49 A (-8d) |  | 0% → 100% | 0d → none |  | baseline start none → 2026-04-07 14:49; baseline finish none → 2026-04-14 14:49 |
| 16 | Создание рабочей версии ядра | 2026-05-07 → 2026-04-28 14:49 A (-9d) | 2026-07-20 → 2026-07-16 17:33 (-4d) | 10w → 10.84w | 0% → 15% |  |  | resources Программист#1; Ведущий программист; Программист#2 → Программист#1; Ведущий программист; Программист#2; Прогаммист#4; Программист#3; baseline start none → 2026-04-14 14:49; baseline finish none → 2026-06-15 10:33 |
| 17 | Создание мультимедиа – наполнения | 2026-04-07 → 2026-04-07 16:00 A | 2026-05-21 → 2026-05-22 15:00 (+1d) |  | 0% → 75% | 84d → 71d |  | baseline start none → 2026-04-07 16:00; baseline finish none → 2026-05-22 15:00 |
| 18 | Создание справочной системы | 2026-08-21 → 2026-08-10 09:00 (-11d) | 2026-09-04 → 2026-08-24 16:03 (-11d) |  |  | 9d → 5.87d |  | baseline start none → 2026-07-07 10:33; baseline finish none → 2026-07-21 17:37 |
| 19 | **Создание руководства пользователя** | 2026-07-27 → 2026-07-14 12:33 (-13d) | 2026-08-19 → 2026-08-10 09:33 (-9d) | 17d → 18.62d |  |  |  | baseline start none → 2026-06-09 15:33; baseline finish none → 2026-07-07 10:33 |
| 20 | Разработка дизайна руководства | 2026-07-27 → 2026-07-14 12:33 (-13d) | 2026-08-03 → 2026-07-21 17:33 (-13d) |  |  |  |  | baseline start none → 2026-06-09 15:33; baseline finish none → 2026-06-18 10:33 |
| 21 | Написание руководства пользователя | 2026-07-29 → 2026-07-16 12:33 (-13d) | 2026-08-19 → 2026-08-10 09:33 (-9d) |  |  |  |  | baseline start none → 2026-06-11 15:33; baseline finish none → 2026-07-07 10:33 |
| 22 | **Создание web – сайта и поддержка** | 2026-07-29 → 2026-07-16 12:33 (-13d) | 2026-08-27 → 2026-08-21 09:37 (-6d) | 21d → 25.63d |  |  |  | baseline start none → 2026-06-11 15:33; baseline finish none → 2026-07-17 17:37 |
| 23 | Разработка структуры сайта | 2026-07-29 → 2026-07-16 12:33 (-13d) | 2026-07-30 → 2026-07-17 12:33 (-13d) |  |  |  |  | baseline start none → 2026-06-11 15:33; baseline finish none → 2026-06-15 15:33 |
| 24 | Разработка дизайна сайта | 2026-07-30 → 2026-07-17 12:33 (-13d) | 2026-08-06 → 2026-07-29 12:33 (-8d) | 1w → 1.43w |  |  |  | baseline start none → 2026-06-15 15:33; baseline finish none → 2026-06-25 14:33 |
| 25 | Наполнение сайта | 2026-08-06 → 2026-07-29 12:33 (-8d) | 2026-08-27 → 2026-08-21 09:37 (-6d) |  |  |  |  | baseline start none → 2026-06-25 14:33; baseline finish none → 2026-07-17 17:37 |
| 26 | Тестирование сайта | 2026-08-20 → 2026-08-14 09:37 (-6d) | 2026-09-17 → 2026-09-01 15:01 (-16d) | 4w → 2.51w |  |  |  | resources Ведущий программист; Программист#2; Программист#1 → Ведущий программист; Программист#1; Программист#2; Прогаммист#4; Программист#3; baseline start none → 2026-07-10 17:37; baseline finish none → 2026-07-29 14:01 |
| 27 | Сдача сайта в эксплуатацию | 2026-09-17 → 2026-09-01 15:01 (-16d) | 2026-09-17 → 2026-09-01 15:01 (-16d) |  |  |  |  | baseline start none → 2026-07-29 14:01; baseline finish none → 2026-07-29 14:01 |
| 28 | **Совещание** | 2026-03-02 → 2026-03-04 09:00 A (+2d) | 2026-04-07 → 2026-07-29 10:00 (+113d) | 25d → 101d | 0% → 45% |  |  | was named Анализ и проектирование; baseline start none → 2026-03-04 09:00; baseline finish none → 2026-07-29 10:00 |
| 29 | Совещание 1 | 2026-03-24 → 2026-03-04 09:00 A (-20d) | 2026-09-04 → 2026-03-04 10:00 A (-184d) | 115d → 1h | 0% → 100% | 0d → none |  | was named Разработка; constraint none → start no earlier than 2026-03-04 09:00; resources none → 3D аниматор; Web-дизайнер; Ведущий программист; Мультимедиа-корреспондент; Системный аналитик; Технический писатель; Художник-дизайнер; baseline start none → 2026-03-04 09:00; baseline finish none → 2026-03-04 10:00 |
| 30 | Совещание 2 | 2026-08-20 → 2026-03-11 09:00 A (-162d) | 2026-09-17 → 2026-03-11 10:00 A (-190d) | 20d → 1h | 0% → 100% | 0d → none |  | was named Тестирование; constraint none → start no earlier than 2026-03-11 09:00; resources none → 3D аниматор; Web-дизайнер; Ведущий программист; Мультимедиа-корреспондент; Системный аналитик; Технический писатель; Художник-дизайнер; baseline start none → 2026-03-11 09:00; baseline finish none → 2026-03-11 10:00 |
